# Umbau Auf der Wörth 14

How a schedule from ProjectLibre changed from version to version. A marks actual dates.

## Version 1 (saved 2023-08-02)

Note of the change: Gantt-Chart

| ID | Task | Duration | Start | Finish | Constraint |
| --- | --- | --- | --- | --- | --- |
| 1 | Entscheidung Beleuchtung im Flur | 1d? | 2022-07-01 | 2022-07-01 |  |
| 2 | Kabel ziehen und Dosen setzen | 14d | 2023-07-24 | 2023-08-10 | start no earlier than 2023-07-24 |
| 3 | Kabel ziehen und Dosen setzen | 14d | 2023-07-24 | 2023-08-10 | start no earlier than 2023-07-24 |
| 4 | Budke: Wände beplanken | 14d | 2023-08-08 | 2023-08-25 | start no earlier than 2023-08-08 |
| 5 | Koste: Installation Wasser- und Abwasserleitungen | 3d | 2023-08-01 | 2023-08-03 | start no earlier than 2023-08-01 |
| 6 | Koste: Installation Sanitärartikel | 5d | 2023-08-01 | 2023-08-07 | start no earlier than 2023-08-01 |
| 7 | Koste: Fußbodenheizung verlegen | 5d | 2023-08-01 | 2023-08-07 | start no earlier than 2023-08-01 |
| 8 | Budke: Trockenestrich verlegen | 5d | 2023-08-01 | 2023-08-07 | start no earlier than 2023-08-01 |
| 9 | Budke: Vorwände im Badezimmer | 2d | 2023-08-01 | 2023-08-02 | start no earlier than 2023-08-01 |
| 10 | Kiy: Bodenbeläge | 14d | 2023-08-01 | 2023-08-18 | start no earlier than 2023-08-01 |
| 11 | Fliesen bestellen | 1d | 2023-08-01 | 2023-08-01 | start no earlier than 2023-08-01 |
| 12 | Parkett bestellen | 1d | 2023-08-01 | 2023-08-01 | start no earlier than 2023-08-01 |
| 13 | Lieferzeit: Fliesen | 42d | 2023-08-01 | 2023-09-27 | start no earlier than 2023-08-01 |
| 14 | Lieferzeit: Parkett | 42d | 2023-08-01 | 2023-09-27 | start no earlier than 2023-08-01 |
| 15 | Anten: Kaminaufbau | 5d | 2022-07-01 | 2022-07-07 |  |
| 16 | Kiy: Tapezieren | 5d | 2022-07-01 | 2022-07-07 |  |
| 17 | Kiy: Streichen | 5d | 2022-07-01 | 2022-07-07 |  |
| 18 | Prinz: Steckdosen, Schalter etc. installieren | 1d? | 2022-07-01 | 2022-07-01 |  |
| 19 | Schornsteinfeger: Kaminabnahme | 1d? | 2022-07-01 | 2022-07-01 |  |
| 20 | Estrich gießen | 1d? | 2022-07-01 | 2022-07-01 |  |
| 21 | Wände putzen EG | 1d? | 2022-07-01 | 2022-07-01 |  |
| 22 | Wände putzen OG | 1d? | 2022-07-01 | 2022-07-01 |  |

## Version 2 (saved 2023-08-02)

Note of the change: Gantt-Chart aktualisiert

Last finish 2023-09-27 → 2023-10-05 (+8d).

Added:

| ID | Task | Duration | Start | Finish | Predecessors | Constraint | Resources |
| --- | --- | --- | --- | --- | --- | --- | --- |
| 4 | Deckenbeleuchtung Flur | 1d | 2023-08-03 | 2023-08-04 | 2 |  | Obergeschoss; Prinz |
| 5 | Badezimmer | 2d | 2023-08-03 | 2023-08-04 |  | start no earlier than 2023-08-03 | Obergeschoss; Prinz |
| 6 | **Kabel ziehen und Dosen setzen** | 2d | 2023-07-24 | 2023-07-25 |  | start no earlier than 2023-07-24 | Prinz; Erdgeschoss |
| 13 | **\Vorwände im Badezimmer** | 1d? | 2023-08-08 | 2023-08-08 | 5, 1 | start no earlier than 2023-08-01 | Budke |
| 14 | Vorwand: Wachbecken | 1d | 2023-08-08 | 2023-08-08 |  | start no earlier than 2023-08-08 | Budke; OG Badezimmer |
| 20 | Fußbodenheizung verlegen | 5d | 2023-08-29 | 2023-09-04 | 12, 13, 19 | start no earlier than 2023-08-01 | Koste |
| 21 | Fußbodenheizung OG Badezimmer | 1d? | 2023-08-09 | 2023-08-09 | 13 |  | Koste; OG Badezimmer |
| 23 | Trockenestrich verlegen | 5d | 2023-09-05 | 2023-09-11 | 20 | start no earlier than 2023-08-01 | Budke |
| 32 | **Bodenbeläge** | 1d? | 2023-09-19 | 2023-09-20 | 23, 31 | start no earlier than 2023-08-01 | Kiy |
| 33 | Kind 2 | 1d? | 2023-09-19 | 2023-09-20 |  |  |  |
| 34 | Schlafen | 1d? | 2023-09-19 | 2023-09-20 |  |  |  |
| 35 | Kleiner Flur | 1d? | 2023-09-19 | 2023-09-20 |  |  |  |
| 36 | Küche | 1d? | 2023-09-19 | 2023-09-20 |  |  |  |
| 37 | Wohnzimmer | 1d? | 2023-09-19 | 2023-09-20 |  |  |  |
| 38 | Flur | 1d? | 2023-09-19 | 2023-09-20 |  |  |  |
| 39 | Gäste-WC | 1d? | 2023-09-19 | 2023-09-20 |  |  |  |
| 40 | Hauswirtschaftsraum | 1d? | 2023-09-19 | 2023-09-20 |  |  |  |
| 41 | Büro | 1d? | 2023-09-19 | 2023-09-20 |  |  |  |
| 42 | **Anten: Kaminaufbau** | 14d? | 2023-09-15 | 2023-10-04 |  | start no earlier than 2023-09-15 | Anten |
| 43 | Sockel mauern | 1d | 2023-09-15 | 2023-09-15 |  | start no earlier than 2023-09-15 | Anten |
| 44 | Kamineinsatz installieren | 1d | 2023-09-18 | 2023-09-18 | 43 | start no earlier than 2023-09-15 | Anten |
| 45 | Schamotte-Steine setzen | 1d | 2023-09-19 | 2023-09-19 | 44 | start no earlier than 2023-09-15 | Anten |
| 46 | Funktionsprüfung | 1d | 2023-09-20 | 2023-09-20 | 45 | start no earlier than 2023-09-15 | Anten |
| 47 | Rechnungstellung | 10d? | 2023-09-21 | 2023-10-04 | 46 |  | Anten |
| 48 | Kaminabnahme | 2d | 2023-09-21 | 2023-09-22 | 46 | start no earlier than 2023-09-15 | Schornsteinfeger |
| 50 | Verspachteln | 3d? | 2023-08-29 | 2023-08-31 | 12 |  | Kiy; Obergeschoss |
| 51 | **Kiy: Tapezieren** | 3d? | 2023-09-01 | 2023-09-05 | 50 | start no earlier than 2023-09-01 | Kiy; Obergeschoss |
| 52 | Kind 2 | 1d? | 2023-09-01 | 2023-09-01 |  |  | Kiy |
| 53 | Schlafen | 1d? | 2023-09-01 | 2023-09-01 |  | start no earlier than 2023-09-01 | Kiy |
| 54 | Kleiner Flur | 1d? | 2023-09-02 | 2023-09-04 |  | start no earlier than 2023-09-02 | Kiy |
| 55 | Küche | 1d? | 2023-09-02 | 2023-09-04 |  | start no earlier than 2023-09-02 | Kiy |
| 56 | Wohnzimmer | 1d? | 2023-09-03 | 2023-09-04 |  | start no earlier than 2023-09-03 | Kiy |
| 57 | Flur | 1d? | 2023-09-04 | 2023-09-04 |  | start no earlier than 2023-09-04 | Kiy |
| 58 | Gäste-WC | 1d? | 2023-09-05 | 2023-09-05 |  | start no earlier than 2023-09-05 | Kiy |
| 59 | Hauswirtschaftsraum | 1d? | 2023-09-05 | 2023-09-05 |  | start no earlier than 2023-09-05 | Kiy |
| 60 | Büro | 1d? | 2023-09-05 | 2023-09-05 |  | start no earlier than 2023-09-05 | Kiy |
| 61 | **Kiy: Streichen** | 1d? | 2023-09-01 | 2023-09-01 |  | start no earlier than 2023-09-01 | Kiy; Obergeschoss |
| 62 | Kind 2 | 1d? | 2023-09-01 | 2023-09-01 |  |  | Kiy |
| 63 | Schlafen | 1d? | 2023-09-01 | 2023-09-01 |  |  | Kiy |
| 64 | Kleiner Flur | 1d? | 2023-09-01 | 2023-09-01 |  |  | Kiy |
| 65 | Küche | 1d? | 2023-09-01 | 2023-09-01 |  |  | Kiy |
| 66 | Wohnzimmer | 1d? | 2023-09-01 | 2023-09-01 |  |  | Kiy |
| 67 | Flur | 1d? | 2023-09-01 | 2023-09-01 |  |  | Kiy |
| 68 | Gäste-WC | 1d? | 2023-09-01 | 2023-09-01 |  |  | Kiy |
| 69 | Hauswirtschaftsraum | 1d? | 2023-09-01 | 2023-09-01 |  |  | Kiy |
| 70 | Büro | 1d? | 2023-09-01 | 2023-09-01 |  |  | Kiy |
| 73 | **Prinz: Steckdosen, Schalter etc. installieren** | 1d? | 2023-09-04 | 2023-09-04 | 61 | start no earlier than 2023-09-01 | Obergeschoss; Prinz |
| 74 | Kind 2 | 1d? | 2023-09-04 | 2023-09-04 |  |  |  |
| 75 | Schlafen | 1d? | 2023-09-04 | 2023-09-04 |  |  |  |
| 76 | Kleiner Flur | 1d? | 2023-09-04 | 2023-09-04 |  |  |  |
| 77 | Küche | 1d? | 2023-09-04 | 2023-09-04 |  |  |  |
| 78 | Wohnzimmer | 1d? | 2023-09-04 | 2023-09-04 |  |  |  |
| 79 | Flur | 1d? | 2023-09-04 | 2023-09-04 |  |  |  |
| 80 | Gäste-WC | 1d? | 2023-09-04 | 2023-09-04 |  |  |  |
| 81 | Hauswirtschaftsraum | 1d? | 2023-09-04 | 2023-09-04 |  |  |  |
| 82 | Büro | 1d? | 2023-09-04 | 2023-09-04 |  |  |  |
| 84 | Isolation der Bodenplatte | 5d? | 2023-08-03 | 2023-08-09 |  | start no earlier than 2023-08-03 |  |
| 85 | Fußbodenheizung aufbauen | 3d? | 2023-08-10 | 2023-08-14 | 84 | start no earlier than 2022-09-01 | Erdgeschoss; Koste |
| 86 | **Estrich EG** | 23d? | 2023-08-15 | 2023-09-14 | 85 |  |  |
| 87 | Estricheinteilung planen | 1d? | 2023-08-15 | 2023-08-15 |  | start no earlier than 2023-08-07 |  |
| 89 | Estrich trocknen | 1d? | 2023-08-17 | 2023-08-17 | 88 |  |  |
| 90 | Estrich aufwärmen | 20d | 2023-08-18 | 2023-09-14 | 89 |  |  |
| 91 | **Fliesenlegen EG** | 1d? | 2023-09-15 | 2023-09-15 | 90 |  | Erdgeschoss |
| 92 | Eingangsbereich | 1d? | 2023-09-15 | 2023-09-15 |  |  |  |
| 93 | Badezimmer EG | 1d? | 2023-09-15 | 2023-09-15 |  |  |  |
| 94 | **Wände putzen OG** | 1d? | 2023-07-03 | 2023-07-03 |  |  | Kettler; Obergeschoss |
| 95 | Wohnzimmer | 1d? | 2023-07-03 | 2023-07-03 |  |  |  |
| 96 | Kind 1 | 1d? | 2023-07-03 | 2023-07-03 |  |  |  |
| 97 | **Tapezieren** | 1d? | 2023-08-18 | 2023-08-18 | 89 | start no earlier than 2023-08-01 | Erdgeschoss |
| 98 | Eingangsbereich | 1d? | 2023-08-18 | 2023-08-18 |  |  |  |
| 99 | Badezimmer EG | 1d? | 2023-08-18 | 2023-08-18 |  |  |  |
| 100 | **Streichen** | 1d? | 2023-07-03 | 2023-07-03 |  |  | Kiy |
| 101 | Eingangsbereich EG | 1d? | 2023-07-03 | 2023-07-03 |  |  | Kiy |
| 102 | Badezimmer EG | 1d? | 2023-07-03 | 2023-07-03 |  |  | Kiy |
| 105 | Holzbauarbeiten: Rechnungstellung | 1d? | 2023-07-03 | 2023-07-03 |  |  | Budke |
| 106 | Malerarbeiten: Rechnungstellung | 1d? | 2023-07-04 | 2023-07-04 | 100 |  | Kiy |
| 108 | Innentüren bestellen | 1d? | 2023-07-03 | 2023-07-03 |  |  |  |
| 109 | Innentüren: Lieferzeit | 20d? | 2023-07-04 | 2023-07-31 | 108 |  |  |
| 110 | Innentüren montieren | 2d? | 2023-08-01 | 2023-08-02 | 109 |  |  |
| 111 | Innentüren: Rechnungsstellung | 10d? | 2023-08-03 | 2023-08-16 | 110 |  |  |
| 113 | Treppe entwerfen | 1d? | 2023-08-02 | 2023-08-02 |  | start no earlier than 2023-08-02 | Wellmann; Anna-Carina; Andreas |
| 114 | Treppe ausmessen | 1d? | 2023-08-17 | 2023-08-17 | 88 | start no earlier than 2023-08-02 | Wellmann |
| 115 | Treppe bauen | 20d? | 2023-08-18 | 2023-09-14 | 113, 114 | start no earlier than 2023-08-02 | Wellmann |
| 116 | Treppe montieren | 3d? | 2023-09-18 | 2023-09-20 | 91, 115 | start no earlier than 2023-08-02 | Wellmann |
| 117 | Treppe: Rechnungstellung | 10d | 2023-09-21 | 2023-10-04 | 116 |  | Wellmann |
| 119 | Denkmalschutzrechtliche Abnahme | 1d? | 2023-07-03 | 2023-07-03 |  |  | Lampe |
| 120 | Rechnungsprüfung zwecks Auszahlung der Fördermittel | 1d? | 2023-10-05 | 2023-10-05 | 47, 48, 110, 117, 119 |  |  |

Removed: 2 Kabel ziehen und Dosen setzen; 8 Budke: Trockenestrich verlegen; 9 Budke: Vorwände im Badezimmer; 18 Prinz: Steckdosen, Schalter etc. installieren; 22 Wände putzen OG

Changed:

| ID | Task | Start | Finish | Duration | Predecessors | Other |
| --- | --- | --- | --- | --- | --- | --- |
| 1 | Koste: Installation Wasser- und Abwasserleitungen |  | 2023-08-03 → 2023-08-07 (+4d) | 3d → 5d? |  |  |
| 2 | Entscheidung Beleuchtung im Flur | 2022-07-01 → 2023-08-03 (+398d) | 2022-07-01 → 2023-08-03 (+398d) | 1d? → 0.5d |  | constraint none → start no earlier than 2023-08-03; resources Anna-Carina und Andreas → Anna-Carina; Andreas |
| 3 | **Kabel ziehen und Dosen setzen** | 2023-07-24 → 2023-08-03 (+10d) | 2023-08-10 → 2023-08-04 (-6d) | 14d → 2d |  | resources Prinz; Erdgeschoss → Prinz; Obergeschoss |
| 7 | Kabel Steckdosen Eingangsbereich | 2023-08-01 → 2023-07-24 (-8d) | 2023-08-07 → 2023-07-25 (-13d) | 5d → 2d |  | was named Koste: Fußbodenheizung verlegen; constraint start no earlier than 2023-08-01 → none; resources Koste → Erdgeschoss; Prinz |
| 8 | Wände putzen EG | 2022-07-01 → 2023-07-26 (+390d) | 2022-07-01 → 2023-07-26 (+390d) |  | none → 6 |  |
| 10 | Fotodokumentation der Installation in den offenen Wänden | 2023-08-01 → 2023-08-08 (+7d) | 2023-08-18 → 2023-08-08 (-10d) | 14d → 1d | none → 1, 3 | was named Kiy: Bodenbeläge; constraint start no earlier than 2023-08-01 → none; resources Kiy → Andreas |
| 12 | Budke: Wände beplanken | 2023-08-08 → 2023-08-09 (+1d) | 2023-08-25 → 2023-08-28 (+3d) |  | none → 1, 3, 10 |  |
| 15 | Vorwand: Toilette | 2022-07-01 → 2023-08-08 (+403d) | 2022-07-07 → 2023-08-08 (+397d) | 5d → 1d? |  | was named Anten: Kaminaufbau; constraint none → start no earlier than 2023-08-08; resources Anten → Budke; OG Badezimmer |
| 16 | Sitzbank / Vorwand: Dusche | 2022-07-01 → 2023-08-08 (+403d) | 2022-07-07 → 2023-08-08 (+397d) | 5d → 1d? |  | was named Kiy: Tapezieren; constraint none → start no earlier than 2023-08-08; resources Kiy → Budke; OG Badezimmer |
| 17 | Trockenbau Badewanne | 2022-07-01 → 2023-08-08 (+403d) | 2022-07-07 → 2023-08-08 (+397d) | 5d → 1d? |  | was named Kiy: Streichen; constraint none → start no earlier than 2023-08-08; resources Kiy → Budke; OG Badezimmer |
| 19 | Bodentank | 2022-07-01 → 2023-08-08 (+403d) | 2022-07-01 → 2023-08-08 (+403d) |  |  | was named Schornsteinfeger: Kaminabnahme; constraint none → start no earlier than 2023-08-08; resources Schornsteinfeger → Budke; OG Büro |
| 28 | Fliesen bestellen |  |  | 1d → 0.5d |  | resources Anna-Carina und Andreas → Anna-Carina; Andreas |
| 29 | Lieferzeit: Fliesen |  | 2023-09-27 → 2023-09-19 (-8d) | 42d → 35d? | none → 28 |  |
| 30 | Parkett bestellen |  |  | 1d → 0.5d |  | resources Anna-Carina und Andreas → Anna-Carina; Andreas |
| 31 | Lieferzeit: Parkett |  | 2023-09-27 → 2023-09-19 (-8d) | 42d → 35d? | none → 30 |  |
| 72 | Koste: Installation Sanitärartikel | 2023-08-01 → 2023-09-04 (+34d) | 2023-08-07 → 2023-09-08 (+32d) |  | none → 61 |  |
| 88 | Estrich gießen | 2022-07-01 → 2023-08-16 (+411d) | 2022-07-01 → 2023-08-16 (+411d) |  | none → 87 | constraint none → start no earlier than 2023-08-08 |
